# ERP_Team13

Schedule from MS Project, 2023-03-31 to 2025-07-15, costs in ₹, A marks actual dates.

## Calendars

- Standard: Mon-Fri 08:00-12:00, 13:00-17:00; Sat-Sun off.

## Resources

| Resource | Rate |
| --- | --- |
| SecurityEngineer | 57.5 |
| SoftwareEngineer | 57.7 |
| Developer1 | 54.75 |
| Developer2 | 53.9 |
| Developer3 | 54.15 |
| Developer4 | 53.2 |
| Developer5 | 53.65 |
| Developer6 | 55 |
| Developer7 | 54.3 |
| Developer8 | 53 |
| Developer9 | 55.15 |
| Developer10 | 53.45 |
| Developer11 | 54.5 |
| NetworkEngineer | 51 |
| ProjectManager1 | 69.95 |
| ProjectManager2 | 59.4 |
| ProjectManager3 | 57.75 |
| Tester1 | 39 |
| Tester2 | 37.65 |
| FunctionalManager1 | 52 |
| FunctionalManager2 | 52 |
| FunctionalManager3 | 52 |
| SecurityAnalyst | 53.25 |
| SystemAnalyst1 | 54.3 |
| SystemAnalyst2 | 50.7 |
| SystemAnalyst3 | 49.95 |
| Laptop1 | 1300 |
| Laptop2 | 1300 |
| Laptop3 | 1300 |
| Laptop4 | 1300 |
| Laptop5 | 1300 |
| Laptop6 | 1300 |
| Laptop7 | 1300 |
| Laptop8 | 1300 |
| Laptop9 | 1300 |
| Laptop10 | 1300 |
| Laptop11 | 1300 |
| Laptop12 | 1300 |
| Laptop13 | 1300 |
| Laptop14 | 1300 |
| Laptop15 | 1300 |
| Desktop1 | 1250 |
| Desktop2 | 1250 |
| Desktop3 | 1250 |
| Desktop4 | 1250 |
| Desktop5 | 1250 |
| Desktop6 | 1250 |
| Desktop7 | 1250 |
| Desktop8 | 1250 |
| Desktop9 | 1250 |
| Desktop10 | 1250 |
| Desktop11 | 1250 |
| PDA1 | 270 |
| PDA2 | 270 |
| PDA3 | 270 |
| PDA4 | 270 |
| PDA5 | 270 |
| PDA6 | 270 |
| PDA7 | 270 |
| PDA8 | 270 |
| PDA9 | 270 |
| Cellphone1 | 800 |
| Cellphone2 | 800 |
| Cellphone3 | 800 |
| Cellphone4 | 800 |
| Cellphone5 | 800 |
| Cellphone6 | 800 |
| Cellphone7 | 800 |
| Cellphone8 | 800 |
| Cellphone9 | 800 |
| Cellphone10 | 800 |
| Cellphone11 | 800 |
| Cellphone12 | 800 |

## Schedule

| ID | WBS | Task | Type | Duration | Start | Finish | Predecessors | Complete | Remaining | Total slack | Resources | Work | Actual work | Cost | Actual cost |
| --- | --- | --- | --- | --- | --- | --- | --- | --- | --- | --- | --- | --- | --- | --- | --- |
| 1 | 1 | **ERP_Project_Team_13** |  | 597.13d | 2023-03-31 A | 2025-07-15 |  | 50% | 298.57d | 0d |  | 18968h | 8508.8h | 1,402,147.87 | 612,592.74 |
| 2 | 1.1 | **Project Initiation** |  | 53d | 2023-03-31 A | 2023-06-13 A |  | 100% |  |  |  | 1440h | 1440h | 126,499.2 | 126,499.2 |
| 3 | 1.1.1 | Develop project charter |  | 10d | 2023-03-31 A | 2023-04-13 A |  | 100% |  |  | Cellphone1; Cellphone2; Cellphone3; Laptop1; Laptop2; Laptop3; PDA1; PDA2; PDA3; ProjectManager1; ProjectManager2; ProjectManager3 | 240h | 240h | 22,078 | 22,078 |
| 4 | 1.1.2 | Develop Statement Of Work |  | 11d | 2023-04-14 A | 2023-04-28 A | 3 | 100% |  |  | Cellphone1; Cellphone2; Cellphone3; Laptop1; Laptop2; Laptop3; PDA1; PDA2; PDA3; ProjectManager1; ProjectManager2; ProjectManager3 | 264h | 264h | 23,574.8 | 23,574.8 |
| 5 | 1.1.3 | Develop preliminary scope development |  | 13d | 2023-05-01 A | 2023-05-17 A | 4 | 100% |  |  | Cellphone1; Cellphone2; Cellphone11; Cellphone12; Laptop1; Laptop2; Laptop11; Laptop12; PDA1; PDA2; PDA7; PDA8; ProjectManager1; ProjectManager2; SystemAnalyst1; SystemAnalyst2 | 416h | 416h | 33,852.4 | 33,852.4 |
| 6 | 1.1.4 | Develop preliminary architectural model |  | 8d | 2023-05-18 A | 2023-05-29 A | 3, 5 | 100% |  |  | Cellphone2; Cellphone3; Cellphone11; Cellphone12; Laptop2; Laptop3; Laptop12; Laptop13; PDA2; PDA3; PDA8; PDA9; ProjectManager2; ProjectManager3; SystemAnalyst2; SystemAnalyst3 | 256h | 256h | 23,419.2 | 23,419.2 |
| 7 | 1.1.5 | Project initiation complete |  | 11d | 2023-05-30 A | 2023-06-13 A | 3, 4, 5, 6 | 100% |  |  | Cellphone1; Cellphone2; Cellphone3; Laptop1; Laptop2; Laptop3; PDA1; PDA2; PDA3; ProjectManager1; ProjectManager2; ProjectManager3 | 264h | 264h | 23,574.8 | 23,574.8 |
| 8 | 1.2 | **Project plan** |  | 136.8d | 2023-06-14 A | 2023-12-21 A |  | 100% |  |  |  | 3304h | 3304h | 228,242.4 | 228,242.4 |
| 9 | 1.2.1 | Develop scope management plan |  | 11d | 2023-06-14 A | 2023-06-28 A | 2 | 100% |  |  | Cellphone1; Cellphone2; Laptop1; Laptop2; PDA1; PDA2; ProjectManager1; ProjectManager2 | 176h | 176h | 16,122.8 | 16,122.8 |
| 10 | 1.2.2 | Develop change management plan |  | 14d | 2023-08-02 A | 2023-08-21 A | 9 | 100% |  |  | Cellphone11; Cellphone12; Laptop11; Laptop12; PDA7; PDA8; SystemAnalyst1; SystemAnalyst2 | 224h | 224h | 16,500 | 16,500 |
| 11 | 1.2.3 | Develop initial descriptive budget |  | 24d | 2023-06-29 A | 2023-08-01 A | 9 | 100% |  |  | Cellphone6; Cellphone10; Cellphone11; FunctionalManager1; Laptop4; Laptop10; Laptop11; PDA7; PDA8; SystemAnalyst1; SystemAnalyst2 | 576h | 576h | 36,984 | 36,984 |
| 12 | 1.2.4 | Develop schedule |  | 29d | 2023-08-22 A | 2023-09-29 A | 10, 11 | 100% |  |  | Cellphone7; Cellphone11; Cellphone12; FunctionalManager2; Laptop5; Laptop11; Laptop12; PDA8; PDA9; SystemAnalyst2; SystemAnalyst3 | 696h | 696h | 42,254.8 | 42,254.8 |
| 13 | 1.2.5 | Develop quality management plan |  | 31d | 2023-10-02 A | 2023-11-13 A | 12 | 100% |  |  | Cellphone7; Cellphone11; Cellphone12; FunctionalManager2; Laptop5; Laptop11; Laptop12; PDA8; PDA9; SystemAnalyst2; SystemAnalyst3 | 744h | 744h | 44,697.2 | 44,697.2 |
| 14 | 1.2.6 | Develop human resource plan |  | 13d | 2023-11-14 A | 2023-11-30 A | 13 | 100% |  |  | Cellphone8; Cellphone10; Cellphone12; FunctionalManager3; Laptop6; Laptop10; Laptop12; PDA7; PDA9; SystemAnalyst1; SystemAnalyst3 | 312h | 312h | 23,090 | 23,090 |
| 15 | 1.2.7 | Develop risk management plan |  | 13.8d | 2023-12-01 A | 2023-12-20 A | 14 | 100% |  |  | Cellphone8; Cellphone10; Cellphone12; FunctionalManager3; Laptop6; Laptop10; Laptop12; PDA7; PDA9; SystemAnalyst1; SystemAnalyst3; Cellphone9; Laptop9; Laptop13; PDA6; SecurityAnalyst; SecurityEngineer | 552h | 552h | 39,986.8 | 39,986.8 |
| 16 | 1.2.8 | Project plan complete |  | 1d | 2023-12-20 A | 2023-12-21 A | 9, 10, 11, 12, 13, 14, 15 | 100% |  |  | Cellphone1; Cellphone2; Cellphone3; Laptop1; Laptop2; Laptop3; PDA1; PDA2; PDA3; ProjectManager1; ProjectManager2; ProjectManager3 | 24h | 24h | 8,606.8 | 8,606.8 |
| 17 | 1.3 | **Project Execution** |  | 405.33d | 2023-12-21 A | 2025-07-11 |  | 27% | 296.57d | 0d |  | 14176h | 3764.8h | 1,030,192.67 | 257,851.14 |
| 18 | 1.3.1 | **Release 1** |  | 63d | 2023-12-21 A | 2024-03-19 A |  | 100% |  |  |  | 2240h | 2240h | 156,566.4 | 156,566.4 |
| 19 | 1.3.1.1 | Analysis phase |  | 13d | 2023-12-21 A | 2024-01-09 A | 8 | 100% |  |  | Cellphone10; Desktop1; Desktop2; Desktop3; Developer1; Developer2; Developer3; Laptop10; PDA7; SystemAnalyst1 | 416h | 416h | 28,698.4 | 28,698.4 |
| 20 | 1.3.1.2 | Design phase |  | 12d | 2024-01-09 A | 2024-01-25 A | 19 | 100% |  |  | Desktop1; Desktop2; Desktop3; Developer1; Developer2; Developer3; Laptop15; NetworkEngineer | 384h | 384h | 25,574.8 | 25,574.8 |
| 21 | 1.3.1.3 | Construction phase |  | 15d | 2024-01-25 A | 2024-02-15 A | 20 | 100% |  |  | Cellphone10; Desktop1; Desktop2; Desktop3; Developer1; Developer2; Developer3; Laptop10; PDA7; SystemAnalyst2 | 480h | 480h | 31,740 | 31,740 |
| 22 | 1.3.1.4 | Validation phase |  | 14d | 2024-02-15 A | 2024-03-06 A | 21 | 100% |  |  | Cellphone6; Desktop1; Desktop2; Desktop3; Developer1; Developer2; Developer3; FunctionalManager1; Laptop4; Cellphone4; Laptop7; PDA4; Tester1; Tester2; Cellphone5; Laptop8; PDA5 | 672h | 672h | 43,232.4 | 43,232.4 |
| 23 | 1.3.1.5 | Deployment phase |  | 7d | 2024-03-06 A | 2024-03-15 A | 22 | 100% |  |  | Cellphone12; Desktop1; Desktop2; Desktop3; Developer1; Developer2; Developer3; Laptop12; PDA9; SystemAnalyst3 | 224h | 224h | 18,034 | 18,034 |
| 24 | 1.3.1.6 | Closeout |  | 2d | 2024-03-15 A | 2024-03-19 A | 23 | 100% |  |  | Cellphone6; Desktop1; Desktop2; Desktop3; Developer1; Developer2; Developer3; FunctionalManager1; Laptop4 | 64h | 64h | 9,286.8 | 9,286.8 |
| 25 | 1.3.1.7 | Release 1 Complete | milestone | 0d | 2024-03-19 A | 2024-03-19 A | 24 | 100% |  |  | Cellphone1; Cellphone2; Cellphone3; Laptop1; Laptop2; Laptop3; PDA1; PDA2; PDA3; ProjectManager1; ProjectManager2; ProjectManager3 |  |  |  |  |

| ID | WBS | Task | Type | Duration | Start | Finish | Predecessors | Complete | Remaining | Total slack | Resources | Work | Actual work | Cost | Actual cost |
| --- | --- | --- | --- | --- | --- | --- | --- | --- | --- | --- | --- | --- | --- | --- | --- |
| 26 | 1.3.2 | **Release 2** |  | 66d | 2024-03-19 A | 2024-06-19 |  | 69% | 20.23d | 0d |  | 2320h | 1524.8h | 161,059.6 | 101,284.74 |
| 27 | 1.3.2.1 | Analysis phase |  | 13d | 2024-03-19 A | 2024-04-05 A | 18 | 100% |  |  | Cellphone10; Desktop1; Desktop2; Desktop3; Developer1; Developer2; Developer3; Laptop10; PDA7; SystemAnalyst1 | 416h | 416h | 28,698.4 | 28,698.4 |
| 28 | 1.3.2.2 | Design phase |  | 14d | 2024-04-05 A | 2024-04-25 A | 27 | 100% |  |  | Desktop1; Desktop2; Desktop3; Developer1; Developer2; Developer3; Laptop15; NetworkEngineer | 448h | 448h | 28,995.6 | 28,995.6 |
| 29 | 1.3.2.3 | Construction phase |  | 15d | 2024-04-25 A | 2024-05-16 A | 28 | 100% |  |  | Cellphone10; Desktop1; Desktop2; Desktop3; Developer1; Developer2; Developer3; Laptop10; PDA7; SystemAnalyst2 | 480h | 480h | 31,740 | 31,740 |
| 30 | 1.3.2.4 | Validation phase |  | 13d | 2024-05-16 A | 2024-06-04 | 29 | 29% | 9.23d | 0d | Cellphone6; Desktop1; Desktop2; Desktop3; Developer1; Developer2; Developer3; FunctionalManager1; Laptop4; Cellphone4; Laptop7; PDA4; Tester1; Tester2; Cellphone5; Laptop8; PDA5 | 624h | 180.8h | 40,900.8 | 11,850.74 |
| 31 | 1.3.2.5 | Deployment phase |  | 9d | 2024-06-04 | 2024-06-17 | 30 |  |  | 0d | Cellphone12; Desktop1; Desktop2; Desktop3; Developer1; Developer2; Developer3; Laptop12; PDA9; SystemAnalyst3 | 288h |  | 21,438 |  |
| 32 | 1.3.2.6 | Closeout |  | 2d | 2024-06-17 | 2024-06-19 | 31 |  |  | 0d | Cellphone6; Desktop1; Desktop2; Desktop3; Developer1; Developer2; Developer3; FunctionalManager1; Laptop4 | 64h |  | 9,286.8 |  |
| 33 | 1.3.2.7 | Release 2 Complete | milestone | 0d | 2024-06-19 | 2024-06-19 | 32 |  |  | 0d | Cellphone1; Cellphone2; Cellphone3; Laptop1; Laptop2; Laptop3; PDA1; PDA2; PDA3; ProjectManager1; ProjectManager2; ProjectManager3 |  |  |  |  |
| 34 | 1.3.3 | **Release 3** |  | 51.67d | 2024-06-19 | 2024-08-30 |  |  |  | 0d |  | 1720h |  | 130,829.73 |  |
| 35 | 1.3.3.1 | Analysis phase |  | 14d | 2024-06-19 | 2024-07-09 | 26 |  |  | 0d | Cellphone10; Laptop10; PDA7; SystemAnalyst1; Desktop4; Desktop5; Desktop6; Developer4; Developer5; Developer6 | 448h |  | 30,328.8 |  |
| 36 | 1.3.3.2 | Design phase |  | 13d | 2024-07-09 | 2024-07-26 | 35 |  |  | 0d | Laptop15; NetworkEngineer; Desktop4; Desktop5; Desktop6; Developer4; Developer5; Developer6 | 416h |  | 27,186.4 |  |
| 37 | 1.3.3.3 | Construction phase |  | 11d | 2024-07-26 | 2024-08-12 | 36 |  |  | 0d | Cellphone10; Laptop10; PDA7; SystemAnalyst2; Desktop4; Desktop5; Desktop6; Developer4; Developer5; Developer6 | 352h |  | 24,824.4 |  |
| 38 | 1.3.3.4 | Validation phase |  | 4.67d | 2024-08-12 | 2024-08-19 | 37 |  |  | 0d | Cellphone7; Desktop4; Desktop5; Desktop6; Developer4; Developer5; Developer6; FunctionalManager2; Laptop5; Cellphone4; Laptop7; PDA4; Tester1; Tester2; Cellphone5; Laptop8; PDA5 | 224h |  | 21,435.33 |  |
| 39 | 1.3.3.5 | Deployment phase |  | 6d | 2024-08-19 | 2024-08-27 | 38 |  |  | 0d | Cellphone12; Laptop12; PDA9; SystemAnalyst3; Desktop4; Desktop5; Desktop6; Developer4; Developer5; Developer6 | 192h |  | 16,286.4 |  |
| 40 | 1.3.3.6 | Closeout |  | 2d | 2024-08-27 | 2024-08-29 | 39 |  |  | 0d | Cellphone7; Desktop4; Desktop5; Desktop6; Developer4; Developer5; Developer6; FunctionalManager2; Laptop5 | 64h |  | 9,271.6 |  |
| 41 | 1.3.3.7 | Release 3 Complete |  | 1d | 2024-08-29 | 2024-08-30 | 40 |  |  | 0d | Cellphone1; Cellphone2; Cellphone3; Laptop1; Laptop2; Laptop3; PDA1; PDA2; PDA3; ProjectManager1; ProjectManager2; ProjectManager3 | 24h |  | 1,496.8 |  |
| 42 | 1.3.4 | **Release 4** |  | 50.33d | 2024-08-30 | 2024-11-08 |  |  |  | 0d |  | 1728h |  | 130,463.87 |  |
| 43 | 1.3.4.1 | Analysis phase |  | 15d | 2024-08-30 | 2024-09-20 | 34 |  |  | 0d | Cellphone10; Laptop10; PDA7; SystemAnalyst1; Desktop4; Desktop5; Desktop6; Developer4; Developer5; Developer6 | 480h |  | 32,058 |  |
| 44 | 1.3.4.2 | Design phase |  | 13d | 2024-09-20 | 2024-10-09 | 43 |  |  | 0d | Laptop15; NetworkEngineer; Desktop4; Desktop5; Desktop6; Developer4; Developer5; Developer6 | 416h |  | 27,186.4 |  |
| 45 | 1.3.4.3 | Construction phase |  | 8d | 2024-10-09 | 2024-10-21 | 44 |  |  | 0d | Cellphone10; Laptop10; PDA7; SystemAnalyst2; Desktop4; Desktop5; Desktop6; Developer4; Developer5; Developer6 | 256h |  | 19,723.2 |  |
| 46 | 1.3.4.4 | Validation phase |  | 7.33d | 2024-10-21 | 2024-10-30 | 45 |  |  | 0d | Cellphone7; Desktop4; Desktop5; Desktop6; Developer4; Developer5; Developer6; FunctionalManager2; Laptop5; Cellphone4; Laptop7; PDA4; Tester1; Tester2; Cellphone5; Laptop8; PDA5 | 352h |  | 27,632.67 |  |
| 47 | 1.3.4.5 | Deployment phase |  | 5d | 2024-10-30 | 2024-11-06 | 46 |  |  | 0d | Cellphone12; Laptop12; PDA9; SystemAnalyst3; Desktop4; Desktop5; Desktop6; Developer4; Developer5; Developer6 | 160h |  | 14,592 |  |
| 48 | 1.3.4.6 | Closeout |  | 2d | 2024-11-06 | 2024-11-08 | 47 |  |  | 0d | Cellphone7; Desktop4; Desktop5; Desktop6; Developer4; Developer5; Developer6; FunctionalManager2; Laptop5 | 64h |  | 9,271.6 |  |
| 49 | 1.3.4.7 | Release 4 Complete | milestone | 0d | 2024-11-08 | 2024-11-08 | 48 |  |  | 0d | Cellphone1; Cellphone2; Cellphone3; Laptop1; Laptop2; Laptop3; PDA1; PDA2; PDA3; ProjectManager1; ProjectManager2; ProjectManager3 |  |  |  |  |

| ID | WBS | Task | Type | Duration | Start | Finish | Predecessors | Total slack | Resources | Work | Cost |
| --- | --- | --- | --- | --- | --- | --- | --- | --- | --- | --- | --- |
| 50 | 1.3.5 | **Release 5** |  | 55.33d | 2024-11-08 | 2025-01-27 |  | 0d |  | 1976h | 146,143.07 |
| 51 | 1.3.5.1 | Analysis phase |  | 12d | 2024-11-08 | 2024-11-26 | 42 | 0d | Cellphone10; Laptop10; PDA7; SystemAnalyst1; Desktop7; Desktop8; Desktop9; Developer7; Developer8; Developer9 | 384h | 26,928 |
| 52 | 1.3.5.2 | Design phase |  | 15d | 2024-11-26 | 2024-12-17 | 51 | 0d | Laptop15; NetworkEngineer; Desktop7; Desktop8; Desktop9; Developer7; Developer8; Developer9; Laptop14; SoftwareEngineer | 600h | 38,888 |
| 53 | 1.3.5.3 | Construction phase |  | 16d | 2024-12-17 | 2025-01-08 | 52 | 0d | Cellphone10; Laptop10; PDA7; SystemAnalyst2; Desktop7; Desktop8; Desktop9; Developer7; Developer8; Developer9 | 512h | 33,403.2 |
| 54 | 1.3.5.4 | Validation phase |  | 5.33d | 2025-01-08 | 2025-01-16 | 53 | 0d | Cellphone8; Desktop7; Desktop8; Desktop9; Developer7; Developer8; Developer9; FunctionalManager3; Laptop6; Cellphone4; Laptop7; PDA4; Tester1; Tester2; Cellphone5; Laptop8; PDA5 | 256h | 23,010.27 |
| 55 | 1.3.5.5 | Deployment phase |  | 4d | 2025-01-16 | 2025-01-22 | 54 | 0d | Cellphone12; Laptop12; PDA9; SystemAnalyst3; Desktop7; Desktop8; Desktop9; Developer7; Developer8; Developer9 | 128h | 12,916.8 |
| 56 | 1.3.5.6 | Closeout |  | 3d | 2025-01-22 | 2025-01-27 | 55 | 0d | Cellphone8; Desktop7; Desktop8; Desktop9; Developer7; Developer8; Developer9; FunctionalManager3; Laptop6 | 96h | 10,996.8 |
| 57 | 1.3.5.7 | Release 5 Complete | milestone | 0d | 2025-01-27 | 2025-01-27 | 56 | 0d | Cellphone1; Cellphone2; Cellphone3; Laptop1; Laptop2; Laptop3; PDA1; PDA2; PDA3; ProjectManager1; ProjectManager2; ProjectManager3 |  |  |
| 58 | 1.3.6 | **Release 6** |  | 60d | 2025-01-27 | 2025-04-21 |  | 0d |  | 2104h | 152,796.8 |
| 59 | 1.3.6.1 | Analysis phase |  | 17d | 2025-01-27 | 2025-02-19 | 50 | 0d | Cellphone10; Laptop10; PDA7; SystemAnalyst1; Desktop7; Desktop8; Desktop9; Developer7; Developer8; Developer9 | 544h | 35,598 |
| 60 | 1.3.6.2 | Design phase |  | 11d | 2025-02-19 | 2025-03-06 | 59 | 0d | Laptop15; NetworkEngineer; Desktop7; Desktop8; Desktop9; Developer7; Developer8; Developer9; Laptop14; SoftwareEngineer | 440h | 30,211.2 |
| 61 | 1.3.6.3 | Construction phase |  | 15d | 2025-03-06 | 2025-03-27 | 60 | 0d | Cellphone10; Laptop10; PDA7; SystemAnalyst2; Desktop7; Desktop8; Desktop9; Developer7; Developer8; Developer9 | 480h | 31,698 |
| 62 | 1.3.6.4 | Validation phase |  | 6d | 2025-03-27 | 2025-04-04 | 61 | 0d | Cellphone8; Desktop7; Desktop8; Desktop9; Developer7; Developer8; Developer9; FunctionalManager3; Laptop6; Cellphone4; Laptop7; PDA4; Tester1; Tester2; Cellphone5; Laptop8; PDA5 | 288h | 24,562.8 |
| 63 | 1.3.6.5 | Deployment phase |  | 7d | 2025-04-04 | 2025-04-15 | 62 | 0d | Cellphone12; Laptop12; PDA9; SystemAnalyst3; Desktop7; Desktop8; Desktop9; Developer7; Developer8; Developer9 | 224h | 18,014.4 |
| 64 | 1.3.6.6 | Closeout |  | 4d | 2025-04-15 | 2025-04-21 | 63 | 0d | Cellphone8; Desktop7; Desktop8; Desktop9; Developer7; Developer8; Developer9; FunctionalManager3; Laptop6 | 128h | 12,712.4 |
| 65 | 1.3.6.7 | Release 6 Complete | milestone | 0d | 2025-04-21 | 2025-04-21 | 64 | 0d | Cellphone1; Cellphone2; Cellphone3; Laptop1; Laptop2; Laptop3; PDA1; PDA2; PDA3; ProjectManager1; ProjectManager2; ProjectManager3 |  |  |
| 66 | 1.3.7 | **Release 7** |  | 58d | 2025-04-21 | 2025-07-10 |  | 0d |  | 2088h | 152,333.2 |
| 67 | 1.3.7.1 | Analysis phase |  | 13d | 2025-04-21 | 2025-05-08 | 58 | 0d | Cellphone10; Laptop10; PDA7; SystemAnalyst1; Desktop9; Developer9; Desktop10; Desktop11; Developer10; Developer11 | 416h | 28,729.6 |
| 68 | 1.3.7.2 | Design phase |  | 17d | 2025-05-08 | 2025-06-02 | 67 | 0d | Laptop15; NetworkEngineer; Desktop9; Developer9; Laptop14; SoftwareEngineer; Desktop10; Desktop11; Developer10; Developer11 | 680h | 43,314.8 |
| 69 | 1.3.7.3 | Construction phase |  | 15d | 2025-06-02 | 2025-06-23 | 68 | 0d | Cellphone10; Laptop10; PDA7; SystemAnalyst2; Desktop9; Developer9; Desktop10; Desktop11; Developer10; Developer11 | 480h | 31,776 |
| 70 | 1.3.7.4 | Validation phase |  | 6d | 2025-06-23 | 2025-07-01 | 69 | 0d | Desktop7; Desktop8; Desktop9; Developer7; Developer8; Developer9; Cellphone6; FunctionalManager1; Laptop4; Cellphone4; Cellphone5; Laptop7; Laptop8; PDA4; PDA5; Tester1; Tester2 | 288h | 24,562.8 |
| 71 | 1.3.7.5 | Deployment phase |  | 4d | 2025-07-01 | 2025-07-07 | 70 | 0d | Cellphone12; Laptop12; PDA9; SystemAnalyst3; Desktop9; Developer9; Desktop10; Desktop11; Developer10; Developer11 | 128h | 12,937.6 |
| 72 | 1.3.7.6 | Closeout |  | 3d | 2025-07-07 | 2025-07-10 | 71 | 0d | Desktop9; Developer9; Cellphone6; Desktop10; Desktop11; Developer10; Developer11; FunctionalManager1; Laptop4 | 96h | 11,012.4 |
| 73 | 1.3.7.7 | Release 7 Complete | milestone | 0d | 2025-07-10 | 2025-07-10 | 72 | 0d | Cellphone1; Cellphone2; Cellphone3; Laptop1; Laptop2; Laptop3; PDA1; PDA2; PDA3; ProjectManager1; ProjectManager2; ProjectManager3 |  |  |
| 74 | 1.3.8 | Execution complete |  | 1d | 2025-07-10 | 2025-07-11 | 18, 26, 34, 42, 50, 58, 66 | 0d |  |  |  |
| 75 | 1.4 | Project Closeout |  | 1d | 2025-07-11 | 2025-07-14 | 17 | 0d | Cellphone1; Cellphone2; Cellphone3; Laptop1; Laptop2; Laptop3; PDA1; PDA2; PDA3; ProjectManager1; ProjectManager2; ProjectManager3 | 24h | 8,606.8 |
| 76 | 1.5 | Project Complete |  | 1d | 2025-07-14 | 2025-07-15 | 75 | 0d | Cellphone1; Cellphone2; Cellphone3; Laptop1; Laptop2; Laptop3; PDA1; PDA2; PDA3; ProjectManager1; ProjectManager2; ProjectManager3 | 24h | 8,606.8 |
